# Simple Project Plan

Schedule from MS Project, 2017-07-07 to 2017-10-31, A marks actual dates.

## Calendars

- Standard: Mon-Fri 08:00-12:00, 13:00-17:00; Sat-Sun off.

## Resources

| Resource |
| --- |
| 吴小刚 |
| 李林 |

## Schedule

| ID | WBS | Task | Type | Duration | Start | Finish | Predecessors | Complete | Remaining | Actual start | Actual finish | Constraint | Resources | Work | Actual work |
| --- | --- | --- | --- | --- | --- | --- | --- | --- | --- | --- | --- | --- | --- | --- | --- |
| 1 | 1 | **计划** |  | 4d | 2017-09-18 | 2017-09-21 |  | 93% | 0.26d | 2017-07-07 |  |  |  | 2208h | 2124h |
| 2 | 1.1 | 架构搭建 | manual | 10d | 2017-07-07 A | 2017-07-20 |  | 75% | 2.5d |  |  |  | 吴小刚 | 80h | 60h |
| 3 | 1.2 | **通用工具** |  | 4d | 2017-08-07 A | 2017-08-10 |  | 63% | 1.46d |  |  |  | 吴小刚 | 176h | 112h |
| 4 | 1.2.1 | 短信 | manual | 4d | 2017-08-07 A | 2017-08-10 |  | 75% | 1d |  |  |  | 吴小刚 | 32h | 24h |
| 5 | 1.2.2 | 邮件 | manual | 2d | 2017-08-11 A | 2017-08-14 |  | 75% | 0.5d |  |  |  | 吴小刚 | 16h | 12h |
| 6 | 1.2.3 | excel处理 | manual | 2d | 2017-08-15 A | 2017-08-16 A |  | 100% |  |  |  |  | 吴小刚 | 16h | 16h |
| 7 | 1.2.4 | 规则引擎 | manual | 5d | 2017-09-25 A | 2017-09-29 |  | 35% | 3.25d |  |  |  | 李林; 吴小刚 | 80h | 28h |
| 8 | 1.3 | **用户/员工/系统管理** |  | 37d | 2017-07-07 A | 2017-08-28 |  | 100% |  |  | 2017-09-15 |  | 吴小刚 | 832h | 832h |
| 9 | 1.3.1 | 需求分析 |  | 2d | 2017-07-07 A | 2017-07-10 A |  | 100% |  |  |  |  | 吴小刚 | 16h | 16h |
| 10 | 1.3.2 | 方案设计 |  | 3d | 2017-07-13 A | 2017-07-17 A | 9 | 100% |  |  |  |  | 吴小刚 | 24h | 24h |
| 11 | 1.3.3 | 数据模型 |  | 4d | 2017-07-19 A | 2017-07-24 A | 9 | 100% |  |  |  |  | 吴小刚 | 32h | 32h |
| 12 | 1.3.4 | api文档编写 | manual | 5d | 2017-09-11 A | 2017-09-15 A |  | 100% |  |  |  |  | 吴小刚 | 40h | 40h |
| 13 | 1.3.5 | **功能开发** |  | 25d | 2017-07-25 A | 2017-08-28 |  | 100% |  |  | 2017-08-29 |  | 吴小刚 | 424h | 424h |
| 14 | 1.3.5.1 | 登录服务 |  | 2d | 2017-07-25 A | 2017-07-26 A | 9, 10, 11, 24 | 100% |  |  |  |  | 吴小刚 | 16h | 16h |
| 15 | 1.3.5.2 | 系统域管理 |  | 2d | 2017-07-26 A | 2017-07-27 A | 9, 10, 11, 24 | 100% |  |  |  |  | 吴小刚 | 16h | 16h |
| 16 | 1.3.5.3 | 组织机构 | manual | 3d | 2017-07-28 A | 2017-08-01 A | 9, 10, 11, 24 | 100% |  |  |  | finish no earlier than 2017-07-28 | 吴小刚 | 24h | 24h |
| 17 | 1.3.5.4 | **用户管理** |  | 4d | 2017-08-02 A | 2017-08-07 | 9, 10, 11, 24 | 100% |  |  | 2017-08-09 |  | 吴小刚 | 48h | 48h |
| 18 | 1.3.5.4.1 | 批量导入 | manual | 2d | 2017-08-08 A | 2017-08-09 A | 9, 10, 11, 24 | 100% |  |  |  |  | 吴小刚 | 16h | 16h |
| 19 | 1.3.5.5 | 功能(权限)管理 |  | 3d | 2017-08-14 A | 2017-08-16 A | 9, 10, 11, 24 | 100% |  |  |  |  | 吴小刚 | 24h | 24h |
| 20 | 1.3.5.6 | 角色管理 | manual | 2d | 2017-08-07 A | 2017-08-08 A | 9, 10, 11, 24 | 100% |  |  |  |  | 吴小刚 | 16h | 16h |
| 21 | 1.3.5.7 | 菜单管理 |  | 2d | 2017-08-17 A | 2017-08-18 A | 9, 10, 11, 24 | 100% |  |  |  |  | 吴小刚 | 16h | 16h |
| 22 | 1.3.5.8 | 数据字典管理 |  | 2d | 2017-08-23 A | 2017-08-24 A | 9, 10, 11, 24 | 100% |  |  |  |  | 吴小刚 | 16h | 16h |
| 23 | 1.3.5.9 | **日志管理** |  | 3d | 2017-08-25 | 2017-08-29 A | 9, 10, 11 | 100% |  | 2017-08-21 |  |  | 吴小刚 | 48h | 48h |
| 24 | 1.3.5.9.1 | 自定义日志注解 | manual | 1d | 2017-08-21 A | 2017-08-21 A |  | 100% |  |  |  |  | 吴小刚 | 8h | 8h |
| 25 | 1.3.5.9.2 | 登录日志 | manual | 1d | 2017-08-22 A | 2017-08-22 A | 9, 10, 11, 24 | 100% |  |  |  |  | 吴小刚 | 8h | 8h |
| 26 | 1.3.5.9.3 | 操作日志 | manual | 1d | 2017-08-23 A | 2017-08-23 A | 9, 10, 11, 24 | 100% |  |  |  |  | 吴小刚 | 8h | 8h |

Notes:
- 1: 这是摘要任务。使用摘要任务以帮助您在节中组织项目。

| ID | WBS | Task | Type | Duration | Start | Finish | Complete | Actual start | Actual finish | Resources | Work | Actual work |
| --- | --- | --- | --- | --- | --- | --- | --- | --- | --- | --- | --- | --- |
| 27 | 1.4 | **用户/会员** |  | 22d | 2017-09-04 | 2017-10-03 A | 100% | 2017-09-01 |  | 吴小刚 | 672h | 672h |
| 28 | 1.4.1 | 需求分析 | manual | 2d | 2017-09-13 A | 2017-09-14 A | 100% |  |  | 吴小刚 | 16h | 16h |
| 29 | 1.4.2 | 方案设计 | manual | 3d | 2017-09-13 A | 2017-09-15 A | 100% |  |  | 吴小刚 | 24h | 24h |
| 30 | 1.4.3 | 数据模型 | manual | 4d | 2017-09-13 A | 2017-09-18 A | 100% |  |  | 吴小刚 | 32h | 32h |
| 31 | 1.4.4 | api文档编写 | manual | 5d | 2017-09-18 A | 2017-09-22 A | 100% |  |  | 吴小刚 | 40h | 40h |
| 32 | 1.4.5 | **功能开发** |  | 14d | 2017-09-01 A | 2017-09-20 | 100% |  | 2017-09-08 | 吴小刚 | 384h | 384h |
| 33 | 1.4.5.1 | **前台** |  | 6d | 2017-09-01 A | 2017-09-08 A | 100% |  |  | 吴小刚 | 152h | 152h |
| 34 | 1.4.5.1.1 | 注册 | manual | 1d | 2017-09-04 A | 2017-09-04 A | 100% |  |  | 吴小刚 | 8h | 8h |
| 35 | 1.4.5.1.2 | 登录/登出+日志 | manual | 1d | 2017-09-01 A | 2017-09-01 A | 100% |  |  | 吴小刚 | 8h | 8h |
| 36 | 1.4.5.1.3 | **找回密码** |  | 1d | 2017-09-01 A | 2017-09-01 A | 100% |  |  | 吴小刚 | 24h | 24h |
| 37 | 1.4.5.1.3.1 | 密保手机找回 |  | 1d | 2017-09-01 A | 2017-09-01 A | 100% |  |  | 吴小刚 | 8h | 8h |
| 38 | 1.4.5.1.3.2 | 密保邮箱找回 | manual | 1d | 2017-09-01 A | 2017-09-01 A | 100% |  |  | 吴小刚 | 8h | 8h |
| 39 | 1.4.5.1.4 | **个人设置** |  | 5d | 2017-09-04 A | 2017-09-08 A | 100% |  |  |  | 64h | 64h |
| 40 | 1.4.5.1.4.1 | 实名认证 | manual | 1d | 2017-09-07 A | 2017-09-07 A | 100% |  |  | 吴小刚 | 8h | 8h |
| 41 | 1.4.5.1.4.2 | **信息完善** |  | 1d | 2017-09-08 A | 2017-09-08 A | 100% |  |  | 吴小刚 | 24h | 24h |
| 42 | 1.4.5.1.4.2.1 | 基本信息 | manual | 1d | 2017-09-08 A | 2017-09-08 A | 100% |  |  | 吴小刚 | 8h | 8h |
| 43 | 1.4.5.1.4.2.2 | 模板扩展信息 | manual | 1d | 2017-09-08 A | 2017-09-08 A | 100% |  |  | 吴小刚 | 8h | 8h |
| 44 | 1.4.5.1.4.3 | 登录密码-设置/修改 | manual | 1d | 2017-09-04 A | 2017-09-04 A | 100% |  |  | 吴小刚 | 8h | 8h |
| 45 | 1.4.5.1.4.4 | 手机号码-绑定/修改 | manual | 1d | 2017-09-06 A | 2017-09-06 A | 100% |  |  | 吴小刚 | 8h | 8h |
| 46 | 1.4.5.1.4.5 | 交易密码-设置/修改/找回 | manual | 1d | 2017-09-06 A | 2017-09-06 A | 100% |  |  | 吴小刚 | 8h | 8h |
| 47 | 1.4.5.1.4.6 | 电子邮箱-绑定/修改 | manual | 1d | 2017-09-07 A | 2017-09-07 A | 100% |  |  | 吴小刚 | 8h | 8h |
| 48 | 1.4.5.2 | **后台** |  | 13d | 2017-09-04 A | 2017-09-20 | 100% |  | 2017-09-06 |  | 120h | 120h |
| 49 | 1.4.5.2.1 | **客户** |  | 3d | 2017-09-04 A | 2017-09-06 A | 100% |  |  | 吴小刚 | 88h | 88h |
| 50 | 1.4.5.2.1.1 | **实名认证** |  | 1d | 2017-09-04 A | 2017-09-04 A | 100% |  |  | 吴小刚 | 16h | 16h |
| 51 | 1.4.5.2.1.1.1 | 客户实名认证日志 | manual | 1d | 2017-09-04 A | 2017-09-04 A | 100% |  |  | 吴小刚 | 8h | 8h |
| 52 | 1.4.5.2.1.2 | 会员信息 | manual | 1d | 2017-09-04 A | 2017-09-04 A | 100% |  |  | 吴小刚 | 8h | 8h |
| 53 | 1.4.5.2.1.3 | 账户快照快照 | manual | 1d | 2017-09-04 A | 2017-09-04 A | 100% |  |  | 吴小刚 | 8h | 8h |
| 54 | 1.4.5.2.1.4 | 标签设置 | manual | 1d | 2017-09-04 A | 2017-09-04 A | 100% |  |  | 吴小刚 | 8h | 8h |
| 55 | 1.4.5.2.1.5 | 黑名单设置 | manual | 1d | 2017-09-04 A | 2017-09-04 A | 100% |  |  | 吴小刚 | 8h | 8h |
| 56 | 1.4.5.2.1.6 | 登录日志 | manual | 1d | 2017-09-04 A | 2017-09-04 A | 100% |  |  | 吴小刚 | 8h | 8h |
| 57 | 1.4.5.2.1.7 | 网签协议记录 | manual | 1d | 2017-09-04 A | 2017-09-04 A | 100% |  |  | 吴小刚 | 8h | 8h |
| 58 | 1.4.5.2.2 | 业务类型 | manual | 1d | 2017-09-04 A | 2017-09-04 A | 100% |  |  | 吴小刚 | 8h | 8h |
| 59 | 1.4.5.2.3 | 标签管理 | manual | 1d | 2017-09-04 A | 2017-09-04 A | 100% |  |  | 吴小刚 | 8h | 8h |

| ID | WBS | Task | Type | Duration | Start | Finish | Complete | Actual start | Actual finish | Total slack | Constraint | Resources | Work | Actual work |
| --- | --- | --- | --- | --- | --- | --- | --- | --- | --- | --- | --- | --- | --- | --- |
| 60 | 1.4.5.2.4 | **档案模板管理** |  | 1d | 2017-09-04 A | 2017-09-04 A | 100% |  |  |  |  | 吴小刚 | 16h | 16h |
| 61 | 1.4.5.2.4.1 | 模板属性 | manual | 1d | 2017-09-04 A | 2017-09-04 A | 100% |  |  |  |  | 吴小刚 | 8h | 8h |
| 62 | 1.5 | **用户/渠道商** |  | 26d | 2017-08-07 A | 2017-09-11 | 100% |  | 2017-09-15 |  |  |  | 448h | 448h |
| 63 | 1.5.1 | 需求分析 | manual | 2d | 2017-08-07 A | 2017-08-08 A | 100% |  |  |  |  | 李林 | 16h | 16h |
| 64 | 1.5.2 | 方案设计 | manual | 2d | 2017-08-09 A | 2017-08-10 A | 100% |  |  |  |  | 李林 | 16h | 16h |
| 65 | 1.5.3 | 数据模型 | manual | 2d | 2017-08-11 A | 2017-08-14 A | 100% |  |  |  |  | 李林 | 16h | 16h |
| 66 | 1.5.4 | api文档编写 | manual | 5d | 2017-09-11 A | 2017-09-15 A | 100% |  |  |  |  | 李林 | 40h | 40h |
| 67 | 1.5.5 | **功能开发** |  | 18d | 2017-08-15 | 2017-09-07 A | 100% | 2017-08-14 |  |  |  | 李林 | 360h | 360h |
| 68 | 1.5.5.1 | **前台** |  | 8d | 2017-08-15 A | 2017-08-24 A | 100% |  |  |  |  | 李林 | 88h | 88h |
| 69 | 1.5.5.1.1 | 登录/登出 | manual | 1d | 2017-08-15 A | 2017-08-15 A | 100% |  |  |  |  | 李林 | 8h | 8h |
| 70 | 1.5.5.1.2 | 找回密码 | manual | 1d | 2017-08-15 A | 2017-08-15 A | 100% |  |  |  |  | 李林 | 8h | 8h |
| 71 | 1.5.5.1.3 | 信息设置 | manual | 1d | 2017-08-15 A | 2017-08-15 A | 100% |  |  |  |  | 李林 | 8h | 8h |
| 72 | 1.5.5.2 | **后台** |  | 10d | 2017-08-14 A | 2017-08-25 A | 100% |  |  |  |  | 李林 | 128h | 128h |
| 73 | 1.5.5.2.1 | **渠道商维护** |  | 3d | 2017-08-14 A | 2017-08-16 A | 100% |  |  |  |  | 李林 | 32h | 32h |
| 74 | 1.5.5.2.1.1 | 批量导入 | manual | 1d | 2017-08-15 A | 2017-08-15 A | 100% |  |  |  |  | 李林 | 8h | 8h |
| 75 | 1.5.5.2.2 | 渠道商分类 | manual | 2d | 2017-08-17 A | 2017-08-18 A | 100% |  |  |  |  | 李林 | 16h | 16h |
| 76 | 2 | **账户/系统** |  | 35d? | 2017-09-13 | 2017-10-31 |  |  |  | 0d |  |  | 1376h |  |
| 77 | 2.1 | 需求分析 |  | 6d | 2017-09-13 | 2017-09-20 |  |  |  | 74d |  | 李林; 吴小刚 | 96h |  |
| 78 | 2.2 | 方案设计 |  | 5d | 2017-09-25 | 2017-09-29 |  |  |  | 67d | start no earlier than 2017-09-25 | 李林; 吴小刚 | 80h |  |
| 79 | 2.3 | 数据模型 |  | 17d | 2017-10-09 | 2017-10-31 |  |  |  | 0d | finish no earlier than 2017-10-31 | 李林; 吴小刚 | 272h |  |
| 80 | 2.4 | **功能开发** |  | 1d? | 2017-09-13 | 2017-09-13 |  |  |  | 0d |  | 李林; 吴小刚 | 928h |  |
| 81 | 2.4.1 | **后台** |  | 1d? | 2017-09-13 | 2017-09-13 |  |  |  | 34d |  | 李林; 吴小刚 | 688h |  |
| 82 | 2.4.1.1 | **账户资金管理** |  | 1d? | 2017-09-13 | 2017-09-13 |  |  |  | 34d |  | 李林; 吴小刚 | 96h |  |
| 83 | 2.4.1.1.1 | 用户资金汇总 |  | 1d? | 2017-09-13 | 2017-09-13 |  |  |  | 34d |  | 李林; 吴小刚 | 16h |  |
| 84 | 2.4.1.1.2 | 充值列表 |  | 1d? | 2017-09-13 | 2017-09-13 |  |  |  | 34d |  | 李林; 吴小刚 | 16h |  |
| 85 | 2.4.1.1.3 | 提现列表 |  | 1d? | 2017-09-13 | 2017-09-13 |  |  |  | 34d |  | 李林; 吴小刚 | 16h |  |
| 86 | 2.4.1.1.4 | 资金记录 |  | 1d? | 2017-09-13 | 2017-09-13 |  |  |  | 34d |  | 李林; 吴小刚 | 16h |  |
| 87 | 2.4.1.1.5 | 其它费用操作 |  | 1d? | 2017-09-13 | 2017-09-13 |  |  |  | 34d |  | 李林; 吴小刚 | 16h |  |

| ID | WBS | Task | Duration | Start | Finish | Total slack | Resources | Work |
| --- | --- | --- | --- | --- | --- | --- | --- | --- |
| 88 | 2.4.1.2 | **审核管理** | 1d? | 2017-09-13 | 2017-09-13 | 34d | 李林; 吴小刚 | 128h |
| 89 | 2.4.1.2.1 | 额度申请管理 | 1d? | 2017-09-13 | 2017-09-13 | 34d | 李林; 吴小刚 | 16h |
| 90 | 2.4.1.2.2 | 基本信息审核 | 1d? | 2017-09-13 | 2017-09-13 | 34d | 李林; 吴小刚 | 16h |
| 91 | 2.4.1.2.3 | 新用户认证资料 | 1d? | 2017-09-13 | 2017-09-13 | 34d | 李林; 吴小刚 | 16h |
| 92 | 2.4.1.2.4 | 基本信用资料认证 | 1d? | 2017-09-13 | 2017-09-13 | 34d | 李林; 吴小刚 | 16h |
| 93 | 2.4.1.2.5 | 可选资料认证 | 1d? | 2017-09-13 | 2017-09-13 | 34d | 李林; 吴小刚 | 16h |
| 94 | 2.4.1.2.6 | 认证资料统计 | 1d? | 2017-09-13 | 2017-09-13 | 34d | 李林; 吴小刚 | 16h |
| 95 | 2.4.1.2.7 | 手机号码更改 | 1d? | 2017-09-13 | 2017-09-13 | 34d | 李林; 吴小刚 | 16h |
| 96 | 2.4.1.3 | **借款管理** | 1d? | 2017-09-13 | 2017-09-13 | 34d | 李林; 吴小刚 | 96h |
| 97 | 2.4.1.3.1 | 初审中的借款 | 1d? | 2017-09-13 | 2017-09-13 | 34d | 李林; 吴小刚 | 16h |
| 98 | 2.4.1.3.2 | 招标中的借款 | 1d? | 2017-09-13 | 2017-09-13 | 34d | 李林; 吴小刚 | 16h |
| 99 | 2.4.1.3.3 | 满标审核 | 1d? | 2017-09-13 | 2017-09-13 | 34d | 李林; 吴小刚 | 16h |
| 100 | 2.4.1.3.4 | 流标的借款 | 1d? | 2017-09-13 | 2017-09-13 | 34d | 李林; 吴小刚 | 16h |
| 101 | 2.4.1.3.5 | 所有的借款 | 1d? | 2017-09-13 | 2017-09-13 | 34d | 李林; 吴小刚 | 16h |
| 102 | 2.4.1.4 | **贷后管理** | 1d? | 2017-09-13 | 2017-09-13 | 34d | 李林; 吴小刚 | 96h |
| 103 | 2.4.1.4.1 | 待收款 | 1d? | 2017-09-13 | 2017-09-13 | 34d | 李林; 吴小刚 | 16h |
| 104 | 2.4.1.4.2 | 逾期的还款 | 1d? | 2017-09-13 | 2017-09-13 | 34d | 李林; 吴小刚 | 16h |
| 105 | 2.4.1.4.3 | 逾期垫付 | 1d? | 2017-09-13 | 2017-09-13 | 34d | 李林; 吴小刚 | 16h |
| 106 | 2.4.1.4.4 | 最近3天的还款 | 1d? | 2017-09-13 | 2017-09-13 | 34d | 李林; 吴小刚 | 16h |
| 107 | 2.4.1.4.5 | 已还款 | 1d? | 2017-09-13 | 2017-09-13 | 34d | 李林; 吴小刚 | 16h |
| 108 | 2.4.1.5 | **参数配置** | 1d | 2017-09-13 | 2017-09-13 | 34d | 李林; 吴小刚 | 256h |
| 109 | 2.4.1.5.1 | **常用参数配置** | 1d | 2017-09-13 | 2017-09-13 | 34d | 李林; 吴小刚 | 80h |
| 110 | 2.4.1.5.1.1 | 支付接口配置 | 1d | 2017-09-13 | 2017-09-13 | 34d | 李林; 吴小刚 | 16h |
| 111 | 2.4.1.5.1.2 | 可用充值银行 | 1d | 2017-09-13 | 2017-09-13 | 34d | 李林; 吴小刚 | 16h |
| 112 | 2.4.1.5.1.3 | 会员级别配置 | 1d | 2017-09-13 | 2017-09-13 | 34d | 李林; 吴小刚 | 16h |
| 113 | 2.4.1.5.1.4 | 提现银行设置 | 1d | 2017-09-13 | 2017-09-13 | 34d | 李林; 吴小刚 | 16h |

| ID | WBS | Task | Type | Duration | Start | Finish | Total slack | Resources | Work |
| --- | --- | --- | --- | --- | --- | --- | --- | --- | --- |
| 114 | 2.4.1.5.2 | **贷款相关参数** |  | 1d | 2017-09-13 | 2017-09-13 | 34d | 李林; 吴小刚 | 48h |
| 115 | 2.4.1.5.2.1 | 发标参数配置 |  | 1d | 2017-09-13 | 2017-09-13 | 34d | 李林; 吴小刚 | 16h |
| 116 | 2.4.1.5.2.2 | 费用设置 |  | 1d | 2017-09-13 | 2017-09-13 | 34d | 李林; 吴小刚 | 16h |
| 117 | 2.4.1.5.3 | **合同相关参数** |  | 1d | 2017-09-13 | 2017-09-13 | 34d | 李林; 吴小刚 | 112h |
| 118 | 2.4.1.5.3.1 | 各类通知信息设置 |  | 1d | 2017-09-13 | 2017-09-13 | 34d | 李林; 吴小刚 | 16h |
| 119 | 2.4.1.5.3.2 | 邮件通知信息 |  | 1d | 2017-09-13 | 2017-09-13 | 34d | 李林; 吴小刚 | 16h |
| 120 | 2.4.1.5.3.3 | 手机通知信息 |  | 1d | 2017-09-13 | 2017-09-13 | 34d | 李林; 吴小刚 | 16h |
| 121 | 2.4.1.5.3.4 | 站内信通知信息 |  | 1d | 2017-09-13 | 2017-09-13 | 34d | 李林; 吴小刚 | 16h |
| 122 | 2.4.1.5.3.5 | 信息通知设置 |  | 1d | 2017-09-13 | 2017-09-13 | 34d | 李林; 吴小刚 | 16h |
| 123 | 2.4.1.5.3.6 | 站内信管理 |  | 1d | 2017-09-13 | 2017-09-13 | 34d | 李林; 吴小刚 | 16h |
| 124 | 2.4.2 | **前台** |  | 1d? | 2017-09-13 | 2017-09-13 | 0d | 李林; 吴小刚 | 224h |
| 125 | 2.4.2.1 | **我的账户** |  | 1d? | 2017-09-13 | 2017-09-13 | 0d | 李林; 吴小刚 | 208h |
| 126 | 2.4.2.1.1 | **账户总览** |  | 1d? | 2017-09-13 | 2017-09-13 | 0d | 李林; 吴小刚 | 64h |
| 127 | 2.4.2.1.1.1 | 账户余额 |  | 1d? | 2017-09-13 | 2017-09-13 | 34d | 李林; 吴小刚 | 16h |
| 128 | 2.4.2.1.1.2 | 我的投资记录 |  | 1d? | 2017-09-13 | 2017-09-13 | 34d | 李林; 吴小刚 | 16h |
| 129 | 2.4.2.1.1.3 | 我的借款记录 |  | 1d? | 2017-09-13 | 2017-09-13 | 34d | 李林; 吴小刚 | 16h |
| 130 | 2.4.2.1.1.4 | 最新资金记录 | manual | 1d? | 2017-09-13 | 2017-09-13 |  |  |  |
| 131 | 2.4.2.1.2 | **资金明细** |  | 1d? | 2017-09-13 | 2017-09-13 | 0d |  |  |
| 132 | 2.4.2.1.2.1 | 资金明细 | manual | 1d? | 2017-09-13 | 2017-09-13 |  |  |  |
| 133 | 2.4.2.1.2.2 | 账户银行卡绑定 | manual | 1d? | 2017-09-13 | 2017-09-13 |  |  |  |
| 134 | 2.4.2.1.2.3 | 账户充值 | manual | 1d? | 2017-09-13 | 2017-09-13 |  |  |  |
| 135 | 2.4.2.1.2.4 | 充值记录 | manual | 1d? | 2017-09-13 | 2017-09-13 |  |  |  |
| 136 | 2.4.2.1.2.5 | 账户提现 | manual | 1d? | 2017-09-13 | 2017-09-13 |  |  |  |
| 137 | 2.4.2.1.2.6 | 提现记录 | manual | 1d? | 2017-09-13 | 2017-09-13 |  |  |  |

| ID | WBS | Task | Duration | Start | Finish | Total slack | Resources | Work |
| --- | --- | --- | --- | --- | --- | --- | --- | --- |
| 138 | 2.4.2.1.3 | **个人设置** | 1d? | 2017-09-13 | 2017-09-13 |  | 李林; 吴小刚 | 128h |
| 139 | 2.4.2.1.3.1 | 个人信息、工作信息、银行卡绑定、密码进行设置与修改 | 1d? | 2017-09-13 | 2017-09-13 | 0d | 李林; 吴小刚 | 16h |
| 140 | 2.4.2.1.3.2 | **信息认证** | 1d? | 2017-09-13 | 2017-09-13 | 0d | 李林; 吴小刚 | 80h |
| 141 | 2.4.2.1.3.2.1 | 实名认证(ID5) | 1d? | 2017-09-13 | 2017-09-13 | 0d | 李林; 吴小刚 | 16h |
| 142 | 2.4.2.1.3.2.2 | 学历认证 | 1d? | 2017-09-13 | 2017-09-13 | 0d | 李林; 吴小刚 | 16h |
| 143 | 2.4.2.1.3.2.3 | 手机认证 | 1d? | 2017-09-13 | 2017-09-13 | 0d | 李林; 吴小刚 | 16h |
| 144 | 2.4.2.1.3.2.4 | 视频认证 | 1d? | 2017-09-13 | 2017-09-13 | 0d | 李林; 吴小刚 | 16h |
| 145 | 2.4.2.1.3.3 | 信用认证 | 1d? | 2017-09-13 | 2017-09-13 | 0d | 李林; 吴小刚 | 16h |
